Schedule from MS Project, 2026-10-21 to 2027-01-01, status date 2026-10-23, costs in ₽, A marks actual dates.

## Calendars

- Стандартный: Mon-Fri 09:00-13:00, 14:00-18:00; Sat-Sun off.

## Resources

| Resource | Unit | Rate | Cost per use |
| --- | --- | --- | --- |
| Слесарь-водопроводчик |  | 1250 |  |
| Штукатур |  | 1000 |  |
| Подсобник |  | 500 |  |
| Плиточник |  | 1875 |  |
| Плотник |  | 1875 |  |
| АО «Светлый потолок» |  | 1250 |  |
| Унитаз-компакт | шт | 150000 |  |
| Ванна | шт | 350000 |  |
| Раковина | шт | 250000 |  |
| Смеситель с душем | шт | 100000 |  |
| Плитка | м^2 | 10000 |  |
| Панель | шт | 5000 |  |
| Обои | рул | 15000 |  |
| Навесной потолок |  |  | 700000 |
| Паркет | м^2 | 15000 |  |
| Доставка |  |  |  |

## Schedule

| ID | WBS | Task | Type | Duration | Start | Finish | Predecessors | Complete | Remaining | Baseline start | Baseline finish | Baseline duration | Total slack | Free slack | Constraint | Resources | Work | Actual work | Cost | Baseline cost | Actual cost |
| --- | --- | --- | --- | --- | --- | --- | --- | --- | --- | --- | --- | --- | --- | --- | --- | --- | --- | --- | --- | --- | --- |
| 1 | 1 | Начало проекта |  | 1d | 2026-10-21 A | 2026-10-21 A |  | 100% |  | 2026-10-21 | 2026-10-21 | 1d |  |  | start no earlier than 2026-10-21 |  |  |  |  |  |  |
| 2 | 2 | **Выравнивание стен** |  | 15d | 2026-10-22 A | 2026-11-11 |  | 13% | 13d | 2026-10-22 | 2026-11-11 | 15d | 6d |  |  |  | 120h | 16h | 120,000 | 120,000 | 16,000 |
| 3 | 2.1 | Стены в спальне |  | 4d | 2026-10-22 A | 2026-10-27 | 1 | 50% | 2d | 2026-10-22 | 2026-10-27 | 4d | 6d | 0d |  | Штукатур | 32h | 16h | 32,000 | 32,000 | 16,000 |
| 4 | 2.2 | Стены в гостиной |  | 4d | 2026-10-28 | 2026-11-02 | 3 |  |  | 2026-10-28 | 2026-11-02 | 4d | 6d | 0d |  | Штукатур | 32h |  | 32,000 | 32,000 |  |
| 5 | 2.3 | Стены в кухне |  | 3d | 2026-11-03 | 2026-11-05 | 4 |  |  | 2026-11-03 | 2026-11-05 | 3d | 6d | 0d |  | Штукатур | 24h |  | 24,000 | 24,000 |  |
| 6 | 2.4 | Стены в прихожей |  | 4d | 2026-11-06 | 2026-11-11 | 5 |  |  | 2026-11-06 | 2026-11-11 | 4d | 6d | 0d |  | Штукатур | 32h |  | 32,000 | 32,000 |  |
| 7 | 2.5 | Выравнивание стен завершено | milestone | 0d | 2026-11-11 | 2026-11-11 | 6 |  |  | 2026-11-11 | 2026-11-11 | 0d | 6d | 0d |  |  |  |  |  |  |  |
| 8 | 3 | **Санузел** |  | 13d | 2026-10-22 A | 2026-11-09 |  | 17% | 10.83d | 2026-10-22 | 2026-11-06 | 12d | 8d |  |  |  | 96h | 16h | 447,000 | 447,000 | 8,000 |
| 9 | 3.1 | Снятие штукатурки в санузле |  | 3d | 2026-10-22 A | 2026-10-27 | 1 | 67% | 1d | 2026-10-22 | 2026-10-26 | 3d | 8d | 0d |  | Подсобник | 24h | 16h | 12,000 | 12,000 | 8,000 |
| 10 | 3.2 | Отделка стен санузла |  | 4d | 2026-10-28 | 2026-11-02 | 9 |  |  | 2026-10-27 | 2026-10-30 | 4d | 8d | 0d |  | Плитка [10 м^2]; Плиточник | 32h |  | 160,000 | 160,000 |  |
| 11 | 3.3 | Отделка потолка санузла |  | 2d | 2026-11-03 | 2026-11-04 | 10 |  |  | 2026-11-02 | 2026-11-03 | 2d | 8d | 0d |  | Плиточник; Панель [1 шт] | 16h |  | 35,000 | 35,000 |  |
| 12 | 3.4 | Отделка пола санузла |  | 2d | 2026-11-05 | 2026-11-06 | 11 |  |  | 2026-11-04 | 2026-11-05 | 2d | 8d | 0d |  | Плитка [5 м^2]; Плиточник | 16h |  | 80,000 | 80,000 |  |
| 13 | 3.5 | Установка сантехнического оборудования |  | 1d | 2026-11-09 | 2026-11-09 | 12 |  |  | 2026-11-06 | 2026-11-06 | 1d | 8d | 0d |  | Слесарь-водопроводчик; Унитаз-компакт [1 шт] | 8h |  | 160,000 | 160,000 |  |
| 14 | 3.6 | Ремонт санузла завершен | milestone | 0d | 2026-11-09 | 2026-11-09 | 13 |  |  | 2026-11-06 | 2026-11-06 | 0d | 8d |  |  |  |  |  |  |  |  |
| 15 | 4 | **Ванная** |  | 21d | 2026-10-22 A | 2026-11-19 |  | 15% | 17.77d | 2026-10-22 | 2026-11-19 | 21d | 0d |  |  |  | 104h | 16h | 1,047,000 | 1,047,000 | 8,000 |
| 16 | 4.1 | Снятие штукатурки в ванной |  | 3d | 2026-10-22 A | 2026-10-29 | 1 | 67% | 1d | 2026-10-22 | 2026-10-29 | 3d | 0d |  |  | Подсобник | 24h | 16h | 12,000 | 12,000 | 8,000 |
| 17 | 4.2 | Отделка стен ванной |  | 5d | 2026-10-30 | 2026-11-12 | 16 |  |  | 2026-10-30 | 2026-11-12 | 5d | 0d |  | finish no earlier than 2026-11-12 | Плитка [10 м^2]; Плиточник | 40h |  | 175,000 | 175,000 |  |
| 18 | 4.3 | Отделка потолка ванной |  | 2d | 2026-11-13 | 2026-11-16 | 17 |  |  | 2026-11-13 | 2026-11-16 | 2d | 0d |  |  | Плиточник; Панель [6 шт] | 16h |  | 60,000 | 60,000 |  |
| 19 | 4.4 | Отделка пола ванной |  | 2d | 2026-11-17 | 2026-11-18 | 18 |  |  | 2026-11-17 | 2026-11-18 | 2d | 0d |  |  | Плитка [6 м^2]; Плиточник | 16h |  | 90,000 | 90,000 |  |
| 20 | 4.5 | Установка сантехники |  | 1d | 2026-11-19 | 2026-11-19 | 19 |  |  | 2026-11-19 | 2026-11-19 | 1d | 0d |  |  | Ванна [1 шт]; Слесарь-водопроводчик; Раковина [1 шт]; Смеситель с душем [1 шт] | 8h |  | 710,000 | 710,000 |  |
| 21 | 4.6 | Ремонт ванной завершен | milestone | 0d | 2026-11-19 | 2026-11-19 | 20 |  |  | 2026-11-19 | 2026-11-19 | 0d | 0d |  |  |  |  |  |  |  |  |
| 22 | 5 | **Отделка стен** |  | 21d | 2026-11-20 | 2026-12-18 |  |  |  | 2026-11-20 | 2026-12-18 | 21d | 0d |  |  |  | 240h |  | 718,000 | 718,000 |  |
| 23 | 5.1 | Отделка стен в спальне |  | 5d | 2026-11-20 | 2026-11-26 | 7, 14, 21 |  |  | 2026-11-20 | 2026-11-26 | 5d | 0d |  |  | Обои [8 рул]; Штукатур | 40h |  | 160,000 | 160,000 |  |
| 24 | 5.2 | Отделка стен в гостиной |  | 7d | 2026-11-27 | 2026-12-07 | 23 |  |  | 2026-11-27 | 2026-12-07 | 7d | 0d |  |  | Обои [8 рул]; Штукатур | 56h |  | 176,000 | 176,000 |  |
| 25 | 5.3 | Отделка стен в кухне |  | 5d | 2026-12-08 | 2026-12-14 | 24 |  |  | 2026-12-08 | 2026-12-14 | 5d | 0d |  |  | Штукатур; Плитка [5 м^2]; Плиточник; Панель [10 шт] | 80h |  | 215,000 | 215,000 |  |
| 26 | 5.4 | Отделка стен в прихожей |  | 4d | 2026-12-15 | 2026-12-18 | 25 |  |  | 2026-12-15 | 2026-12-18 | 4d | 0d |  |  | Панель [15 шт]; Штукатур; Плиточник | 64h |  | 167,000 | 167,000 |  |
| 27 | 5.5 | Отделка стен завершена | milestone | 0d | 2026-12-18 | 2026-12-18 | 26 |  |  | 2026-12-18 | 2026-12-18 | 0d | 10d |  |  |  |  |  |  |  |  |

| ID | WBS | Task | Type | Duration | Start | Finish | Predecessors | Baseline start | Baseline finish | Baseline duration | Total slack | Free slack | Resources | Work | Cost | Baseline cost |
| --- | --- | --- | --- | --- | --- | --- | --- | --- | --- | --- | --- | --- | --- | --- | --- | --- |
| 28 | 6 | **Потолки** |  | 29d | 2026-11-12 | 2026-12-22 |  | 2026-11-12 | 2026-12-22 | 29d | 8d |  |  | 80h | 840,000 | 840,000 |
| 29 | 6.1 | Замер |  | 2d | 2026-11-12 | 2026-11-13 | 7 | 2026-11-12 | 2026-11-13 | 2d | 11d | 0d | АО «Светлый потолок» | 16h | 20,000 | 20,000 |
| 30 | 6.2 | Заказ и оплата потолков |  | 2d | 2026-11-16 | 2026-11-17 | 29 | 2026-11-16 | 2026-11-17 | 2d | 11d | 0d | Навесной потолок |  | 700,000 | 700,000 |
| 31 | 6.3 | Навесной потолок в спальне |  | 2d | 2026-12-02 | 2026-12-03 | 23, 30FS+10d | 2026-12-02 | 2026-12-03 | 2d | 15d | 0d | АО «Светлый потолок» | 16h | 20,000 | 20,000 |
| 32 | 6.4 | Навесной потолок в гостиной |  | 2d | 2026-12-08 | 2026-12-09 | 24, 30FS+10d | 2026-12-08 | 2026-12-09 | 2d | 7d | 0d | АО «Светлый потолок» | 16h | 20,000 | 20,000 |
| 33 | 6.5 | Панельный потолок в кухне |  | 2d | 2026-12-21 | 2026-12-22 | 25, 30 | 2026-12-21 | 2026-12-22 | 2d | 5d | 0d | Плиточник; Панель [6 шт] | 16h | 60,000 | 60,000 |
| 34 | 6.6 | Навесной потолок в прихожей |  | 2d | 2026-12-21 | 2026-12-22 | 26, 30FS+10d | 2026-12-21 | 2026-12-22 | 2d | 0d |  | АО «Светлый потолок» | 16h | 20,000 | 20,000 |
| 35 | 6.7 | Монтаж потолков завершен | milestone | 0d | 2026-12-22 | 2026-12-22 | 31, 32, 33, 34 | 2026-12-22 | 2026-12-22 | 0d | 8d |  |  |  |  |  |
| 36 | 7 | **Полы** |  | 21d | 2026-12-04 | 2027-01-01 |  | 2026-12-04 | 2027-01-01 | 21d | 0d |  |  | 160h | 1,170,000 | 1,170,000 |
| 37 | 7.1 | Отделка полов в спальне |  | 6d | 2026-12-04 | 2026-12-11 | 31 | 2026-12-04 | 2026-12-11 | 6d | 15d |  | Паркет [20 м^2]; Плотник | 48h | 390,000 | 390,000 |
| 38 | 7.2 | Отделка полов в гостиной |  | 6d | 2026-12-14 | 2026-12-21 | 32 | 2026-12-14 | 2026-12-21 | 6d | 9d |  | Паркет [1 м^2]; Плотник | 48h | 105,000 | 105,000 |
| 39 | 7.3 | Отделка полов в кухне |  | 3d | 2026-12-23 | 2026-12-25 | 33 | 2026-12-23 | 2026-12-25 | 3d | 5d |  | Паркет [22 м^2]; Плотник | 24h | 375,000 | 375,000 |
| 40 | 7.4 | Отделка полов в прихожей |  | 5d | 2026-12-28 | 2027-01-01 | 34 | 2026-12-28 | 2027-01-01 | 5d | 0d |  | Паркет [15 м^2]; Плотник | 40h | 300,000 | 300,000 |
| 41 | 7.5 | Отделка полов завершена | milestone | 0d | 2027-01-01 | 2027-01-01 | 37, 38, 39, 40 | 2027-01-01 | 2027-01-01 | 0d | 0d |  |  |  |  |  |
| 42 | 7.6 | Конец проекта | milestone | 0d | 2027-01-01 | 2027-01-01 | 41 | 2027-01-01 | 2027-01-01 | 0d | 0d |  |  |  |  |  |
