# ПЗ1_п1

Schedule from MS Project, 2026-10-23 to 2026-12-23, status date 2026-12-10, costs in р, A marks actual dates.

## Calendars

- Стандартный: Mon-Fri 09:00-13:00, 14:00-18:00; Sat-Sun off.

## Resources

| Resource | Unit | Rate | Cost per use |
| --- | --- | --- | --- |
| Слесарь-водопроводчик |  | 1250 |  |
| Штукатур |  | 1000 |  |
| Подсобник |  | 500 |  |
| Плиточник |  | 1875 |  |
| Плотник |  | 1875 |  |
| АО «Светлый потолок» |  | 1250 |  |
| Унитаз-компакт | шт. | 150000 |  |
| Ванна | шт. | 350000 |  |
| Раковина | шт. | 250000 |  |
| Смеситель с душем | шт. | 100000 |  |
| Плитка | м2 | 10000 |  |
| Панель | шт. | 5000 |  |
| Обои | рул. | 15000 |  |
| Навесной потолок | шт. |  | 700000 |
| Паркет | м2 | 15000 |  |
| Доставка |  |  |  |

## Schedule

| ID | WBS | Task | Type | Duration | Start | Finish | Predecessors | Complete | Remaining | Baseline start | Baseline finish | Baseline duration | Total slack | Free slack | Resources | Work | Actual work | Cost | Baseline cost | Actual cost |
| --- | --- | --- | --- | --- | --- | --- | --- | --- | --- | --- | --- | --- | --- | --- | --- | --- | --- | --- | --- | --- |
| 1 | 1 | Начало проекта | milestone | 0d | 2026-10-23 | 2026-10-23 |  |  |  | 2026-10-23 | 2026-10-23 | 0d | 0d |  |  |  |  |  |  |  |
| 2 | 2 | **Выравнивание стен** |  | 15d | 2026-10-23 A | 2026-11-12 |  | 99% | 0d | 2026-10-23 | 2026-11-12 | 15d | 0d |  |  | 120h | 120h | 120,000 | 120,000 | 120,000 |
| 3 | 2.1 | Стены в спальне |  | 4d | 2026-10-23 A | 2026-10-28 A | 1 | 100% |  | 2026-10-23 | 2026-10-28 | 4d |  |  | Штукатур | 32h | 32h | 32,000 | 32,000 | 32,000 |
| 4 | 2.2 | Стены в гостиной |  | 4d | 2026-10-29 A | 2026-11-03 A | 3 | 100% |  | 2026-10-29 | 2026-11-03 | 4d |  |  | Штукатур | 32h | 32h | 32,000 | 32,000 | 32,000 |
| 5 | 2.3 | Стены в кухне |  | 3d | 2026-11-04 A | 2026-11-06 A | 4 | 100% |  | 2026-11-04 | 2026-11-06 | 3d |  |  | Штукатур | 24h | 24h | 24,000 | 24,000 | 24,000 |
| 6 | 2.4 | Стены в прихожей |  | 4d | 2026-11-09 A | 2026-11-12 A | 5 | 100% |  | 2026-11-09 | 2026-11-12 | 4d |  |  | Штукатур | 32h | 32h | 32,000 | 32,000 | 32,000 |
| 7 | 2.5 | Выравнивание стен завершено | milestone | 0d | 2026-11-12 | 2026-11-12 | 6 |  |  | 2026-11-12 | 2026-11-12 | 0d | 0d |  |  |  |  |  |  |  |
| 8 | 3 | **Санузел** |  | 14d | 2026-10-23 | 2026-11-11 |  |  |  | 2026-10-23 | 2026-11-11 | 14d | 1d |  |  | 96h |  | 487,000 | 487,000 |  |
| 9 | 3.1 | Снятие штукатурки в санузле |  | 5d | 2026-10-23 | 2026-10-29 | 1 |  |  | 2026-10-23 | 2026-10-29 | 5d | 1d | 0d | Подсобник | 24h |  | 12,000 | 12,000 |  |
| 10 | 3.2 | Отделка стен санузла |  | 4d | 2026-10-30 | 2026-11-04 | 9 |  |  | 2026-10-30 | 2026-11-04 | 4d | 1d | 0d | Плиточник; Плитка [10 м2] | 32h |  | 160,000 | 160,000 |  |
| 11 | 3.3 | Отделка потолка санузла |  | 2d | 2026-11-05 | 2026-11-06 | 10 |  |  | 2026-11-05 | 2026-11-06 | 2d | 1d | 0d | Плиточник; Панель [5 шт.] | 16h |  | 55,000 | 55,000 |  |
| 12 | 3.4 | Отделка пола санузла |  | 2d | 2026-11-09 | 2026-11-10 | 11 |  |  | 2026-11-09 | 2026-11-10 | 2d | 1d | 0d | Плиточник; Плитка [5 м2] | 16h |  | 80,000 | 80,000 |  |
| 13 | 3.5 | Установка сантехнического оборудования |  | 1d | 2026-11-11 | 2026-11-11 | 12 |  |  | 2026-11-11 | 2026-11-11 | 1d | 1d | 0d | Слесарь-водопроводчик; Унитаз-компакт [1 шт.] | 8h |  | 180,000 | 180,000 |  |
| 14 | 3.6 | Ремонт санузла завершен | milestone | 0d | 2026-11-11 | 2026-11-11 | 13 |  |  | 2026-11-11 | 2026-11-11 | 0d | 1d |  |  |  |  |  |  |  |
| 15 | 4 | **Ванная** |  | 15d | 2026-10-23 | 2026-11-12 |  |  |  | 2026-10-23 | 2026-11-12 | 15d | 0d |  |  | 104h |  | 1,067,000 | 1,067,000 |  |
| 16 | 4.1 | Снятие штукатурки в ванной |  | 5d | 2026-10-23 | 2026-10-29 | 1 |  |  | 2026-10-23 | 2026-10-29 | 5d | 0d |  | Подсобник | 24h |  | 12,000 | 12,000 |  |
| 17 | 4.2 | Отделка стен ванной |  | 5d | 2026-10-30 | 2026-11-05 | 16 |  |  | 2026-10-30 | 2026-11-05 | 5d | 0d |  | Плитка [10 м2]; Плиточник | 40h |  | 175,000 | 175,000 |  |
| 18 | 4.3 | Отделка потолка ванной |  | 2d | 2026-11-06 | 2026-11-09 | 17 |  |  | 2026-11-06 | 2026-11-09 | 2d | 0d |  | Панель [6 шт.]; Плиточник | 16h |  | 60,000 | 60,000 |  |
| 19 | 4.4 | Отделка пола ванной |  | 2d | 2026-11-10 | 2026-11-11 | 18 |  |  | 2026-11-10 | 2026-11-11 | 2d | 0d |  | Плитка [6 м2]; Плиточник | 16h |  | 90,000 | 90,000 |  |
| 20 | 4.5 | Установка сантехники |  | 1d | 2026-11-12 | 2026-11-12 | 19 |  |  | 2026-11-12 | 2026-11-12 | 1d | 0d |  | Ванна [1 шт.]; Раковина [1 шт.]; Слесарь-водопроводчик; Смеситель с душем [1 шт.] | 8h |  | 730,000 | 730,000 |  |
| 21 | 4.6 | Ремонт ванной завершен | milestone | 0d | 2026-11-12 | 2026-11-12 | 20 |  |  | 2026-11-12 | 2026-11-12 | 0d | 0d |  |  |  |  |  |  |  |
| 22 | 5 | **Отделка стен** |  | 22d | 2026-11-13 | 2026-12-14 |  |  |  | 2026-11-13 | 2026-12-14 | 22d | 0d |  |  | 256h |  | 741,000 | 741,000 |  |
| 23 | 5.1 | Отделка стен в спальне |  | 5d | 2026-11-13 | 2026-11-19 | 7, 14, 21 |  |  | 2026-11-13 | 2026-11-19 | 5d | 0d |  | Штукатур; Обои [8 рул.] | 40h |  | 160,000 | 160,000 |  |
| 24 | 5.2 | Отделка стен в гостиной |  | 7d | 2026-11-20 | 2026-11-30 | 23 |  |  | 2026-11-20 | 2026-11-30 | 7d | 0d |  | Штукатур; Обои [8 рул.] | 56h |  | 176,000 | 176,000 |  |
| 25 | 5.3 | Отделка стен в кухне |  | 5d | 2026-12-01 | 2026-12-07 | 24 |  |  | 2026-12-01 | 2026-12-07 | 5d | 0d |  | Панель [10 шт.]; Плитка [5 м2]; Плиточник; Штукатур | 80h |  | 215,000 | 215,000 |  |
| 26 | 5.4 | Отделка стен в прихожей |  | 5d | 2026-12-08 | 2026-12-14 | 25 |  |  | 2026-12-08 | 2026-12-14 | 5d | 0d |  | Панель [15 шт.]; Плиточник; Штукатур | 80h |  | 190,000 | 190,000 |  |
| 27 | 5.5 | Отделка стен завершена | milestone | 0d | 2026-12-14 | 2026-12-14 | 26 |  |  | 2026-12-14 | 2026-12-14 | 0d | 7d |  |  |  |  |  |  |  |

| ID | WBS | Task | Type | Duration | Start | Finish | Predecessors | Baseline start | Baseline finish | Baseline duration | Total slack | Free slack | Resources | Work | Cost | Baseline cost |
| --- | --- | --- | --- | --- | --- | --- | --- | --- | --- | --- | --- | --- | --- | --- | --- | --- |
| 28 | 6 | **Потолки** |  | 24d | 2026-11-13 | 2026-12-16 |  | 2026-11-13 | 2026-12-16 | 24d | 5d |  |  | 80h | 840,000 | 840,000 |
| 29 | 6.1 | Замер |  | 2d | 2026-11-13 | 2026-11-16 | 7 | 2026-11-13 | 2026-11-16 | 2d | 7d | 0d | АО «Светлый потолок» | 16h | 20,000 | 20,000 |
| 30 | 6.2 | Заказ и оплата потолков |  | 2d | 2026-11-17 | 2026-11-18 | 29 | 2026-11-17 | 2026-11-18 | 2d | 7d | 0d | Навесной потолок [1 шт.] |  | 700,000 | 700,000 |
| 31 | 6.3 | Навесной потолок в спальне |  | 2d | 2026-12-03 | 2026-12-04 | 23, 30FS+10d | 2026-12-03 | 2026-12-04 | 2d | 7d | 0d | АО «Светлый потолок» | 16h | 20,000 | 20,000 |
| 32 | 6.4 | Навесной потолок в гостиной |  | 2d | 2026-12-03 | 2026-12-04 | 24, 30FS+10d | 2026-12-03 | 2026-12-04 | 2d | 7d | 0d | АО «Светлый потолок» | 16h | 20,000 | 20,000 |
| 33 | 6.5 | Панельный потолок в кухне |  | 2d | 2026-12-08 | 2026-12-09 | 25, 30 | 2026-12-08 | 2026-12-09 | 2d | 7d | 0d | Плиточник; Панель [6 шт.] | 16h | 60,000 | 60,000 |
| 34 | 6.6 | Навесной потолок в прихожей |  | 2d | 2026-12-15 | 2026-12-16 | 26, 30FS+10d | 2026-12-15 | 2026-12-16 | 2d | 0d |  | АО «Светлый потолок» | 16h | 20,000 | 20,000 |
| 35 | 6.7 | Монтаж потолков завершен | milestone | 0d | 2026-12-16 | 2026-12-16 | 31, 32, 33, 34 | 2026-12-16 | 2026-12-16 | 0d | 5d |  |  |  |  |  |
| 36 | 7 | **Полы** |  | 13d | 2026-12-07 | 2026-12-23 |  | 2026-12-07 | 2026-12-23 | 13d | 0d |  |  | 160h | 1,275,000 | 1,275,000 |
| 37 | 7.1 | Отделка полов в спальне |  | 6d | 2026-12-07 | 2026-12-14 | 31 | 2026-12-07 | 2026-12-14 | 6d | 7d |  | Паркет [20 м2]; Плотник | 48h | 390,000 | 390,000 |
| 38 | 7.2 | Отделка полов в гостиной |  | 6d | 2026-12-07 | 2026-12-14 | 32 | 2026-12-07 | 2026-12-14 | 6d | 7d |  | Паркет [20 м2]; Плотник | 48h | 390,000 | 390,000 |
| 39 | 7.3 | Отделка полов в кухне |  | 3d | 2026-12-10 | 2026-12-14 | 33 | 2026-12-10 | 2026-12-14 | 3d | 7d |  | Паркет [10 м2]; Плотник | 24h | 195,000 | 195,000 |
| 40 | 7.4 | Отделка полов в прихожей |  | 5d | 2026-12-17 | 2026-12-23 | 34 | 2026-12-17 | 2026-12-23 | 5d | 0d |  | Паркет [15 м2]; Плотник | 40h | 300,000 | 300,000 |
| 41 | 7.5 | Отделка полов завершена | milestone | 0d | 2026-12-23 | 2026-12-23 | 37, 38, 39, 40 | 2026-12-23 | 2026-12-23 | 0d | 0d |  |  |  |  |  |
| 42 | 8 | Конец проекта | milestone | 0d | 2026-12-23 | 2026-12-23 | 41 | 2026-12-23 | 2026-12-23 | 0d | 0d |  |  |  |  |  |
